# WBS Detallado

Schedule from MS Project, 2012-09-03 to 2013-01-02, A marks actual dates.

## Calendars

- Estándar: Mon-Fri 09:00-13:00, 15:00-19:00; Sat-Sun off.

## Resources

| Resource |
| --- |
| José Salinas |
| Luis Muga |
| Daniel Hernandez |
| Diego Chavez |

## Schedule

| ID | WBS | Task | Duration | Start | Finish | Complete | Remaining | Total slack | Constraint | Text6 | Text7 |
| --- | --- | --- | --- | --- | --- | --- | --- | --- | --- | --- | --- |
| 1 | 1 | **SGTP** | 88d | 2012-09-03 A | 2013-01-02 | 78% | 19.1d | 0d |  | 0% | 0% |
| 2 | 1.1 | **Iteracion 1** | 8d | 2012-09-03 A | 2012-09-13 A | 100% |  |  |  | 0% | 0% |
| 3 | 1.1.1 | **Planificación** | 2d | 2012-09-03 A | 2012-09-05 A | 100% |  |  |  | 0% | 0% |
| 4 | 1.1.1.1 | Plan de Proyecto | 1d | 2012-09-03 A | 2012-09-03 A | 100% |  |  | start no earlier than 2012-09-03 | 100% | 100% |
| 5 | 1.1.1.2 | Cronograma Detallado | 1d | 2012-09-03 A | 2012-09-04 A | 100% |  |  | finish no earlier than 2012-09-04 | 90% | 100% |
| 6 | 1.1.1.3 | Informe Semanal | 1d | 2012-09-03 A | 2012-09-04 A | 100% |  |  | finish no earlier than 2012-09-04 | 100% | 100% |
| 7 | 1.1.1.4 | Actas de Reuniones | 1d | 2012-09-04 A | 2012-09-05 A | 100% |  |  | finish no earlier than 2012-09-05 | 100% | 100% |
| 8 | 1.1.2 | **Analisis de Riesgos** | 1d | 2012-09-05 A | 2012-09-06 A | 100% |  |  |  | 0% | 0% |
| 9 | 1.1.2.1 | Registro de Riesgos | 1d | 2012-09-05 A | 2012-09-06 A | 100% |  |  | finish no earlier than 2012-09-06 | 100% | 100% |
| 10 | 1.1.3 | **Ingeniería** | 3d | 2012-09-07 A | 2012-09-11 A | 100% |  |  |  | 0% | 0% |
| 11 | 1.1.3.1 | Modelaje Base de Datos | 2d | 2012-09-07 A | 2012-09-11 A | 100% |  |  | finish no earlier than 2012-09-11 | 100% | 100% |
| 12 | 1.1.3.2 | Desarrollo de Prototipos Interfaces | 3d | 2012-09-07 A | 2012-09-11 A | 100% |  |  | finish no earlier than 2012-09-11 | 100% | 100% |
| 13 | 1.1.4 | **Evaluación del Cliente** | 1d | 2012-09-12 A | 2012-09-13 A | 100% |  |  |  | 0% | 0% |
| 14 | 1.1.4.1 | Kick Off Metting Interno | 1d | 2012-09-12 A | 2012-09-12 A | 100% |  |  | start no earlier than 2012-09-12 | 100% | 100% |
| 15 | 1.1.4.2 | Kick Off Metting Externo | 1d | 2012-09-12 A | 2012-09-13 A | 100% |  |  | finish no earlier than 2012-09-13 | 100% | 100% |
| 16 | 1.1.4.3 | Acta de Aceptacion de Entregables | 1d | 2012-09-12 A | 2012-09-13 A | 100% |  |  | finish no earlier than 2012-09-13 | 0% | 100% |
| 17 | 1.2 | **Iteracion 2** | 18d | 2012-09-14 A | 2012-10-09 | 77% | 4.09d | 61d |  | 0% | 0% |
| 18 | 1.2.1 | **Planificación** | 2d | 2012-09-14 A | 2012-09-18 | 57% | 0.86d | 77d |  | 0% | 0% |
| 19 | 1.2.1.1 | Documentos de Arquitectura de Software | 1d | 2012-09-14 | 2012-09-14 |  |  | 78d | start no earlier than 2012-09-14 | 0% | 100% |
| 20 | 1.2.1.2 | Casos de Uso | 1d | 2012-09-14 | 2012-09-15 |  |  | 78d | finish no earlier than 2012-09-15 | 0% | 0% |
| 21 | 1.2.1.3 | Diagrama de Casos de Uso | 1d | 2012-09-14 | 2012-09-15 |  |  | 78d | finish no earlier than 2012-09-15 | 0% | 0% |
| 22 | 1.2.1.4 | Lista Maestra de Requerimientos | 1d | 2012-09-14 A | 2012-09-16 A | 100% |  |  | finish no earlier than 2012-09-16 | 100% | 100% |
| 23 | 1.2.1.5 | Matriz de Trazabilidad | 1d | 2012-09-14 A | 2012-09-16 A | 100% |  |  | finish no earlier than 2012-09-16 | 100% | 100% |
| 24 | 1.2.1.6 | Informe Semanal | 1d | 2012-09-14 A | 2012-09-17 A | 100% |  |  | finish no earlier than 2012-09-17 | 100% | 100% |
| 25 | 1.2.1.7 | Actas de Reuniones | 1d | 2012-09-17 A | 2012-09-18 A | 100% |  |  | finish no earlier than 2012-09-18 | 100% | 100% |

| ID | WBS | Task | Duration | Start | Finish | Complete | Remaining | Total slack | Constraint | Text6 | Text7 |
| --- | --- | --- | --- | --- | --- | --- | --- | --- | --- | --- | --- |
| 26 | 1.2.2 | **Análisis de Riesgos** | 2d | 2012-09-19 A | 2012-09-20 A | 100% |  |  |  | 0% | 0% |
| 27 | 1.2.2.1 | Registros de Riesgos | 2d | 2012-09-19 A | 2012-09-20 A | 100% |  |  | finish no earlier than 2012-09-20 | 100% | 100% |
| 28 | 1.2.3 | **Ingeniería** | 11d | 2012-09-21 A | 2012-10-05 A | 100% |  |  |  | 0% | 0% |
| 29 | 1.2.3.1 | Desarrollo de Logica de Negocio | 11d | 2012-09-21 A | 2012-10-05 A | 100% |  |  | finish no earlier than 2012-10-05 | 100% | 100% |
| 30 | 1.2.4 | **Evaluación del Cliente** | 2d | 2012-10-08 | 2012-10-09 |  |  | 61d |  | 0% | 0% |
| 31 | 1.2.4.1 | Acta de Aceptacion de Entregables | 2d | 2012-10-08 | 2012-10-09 |  |  | 61d | finish no earlier than 2012-10-09 | 0% | 100% |
| 32 | 1.3 | **Iteración 3** | 25d | 2012-10-10 A | 2012-11-13 | 89% | 2.78d | 36d |  | 0% | 0% |
| 33 | 1.3.1 | **Planificación** | 2d | 2012-10-10 A | 2012-10-12 | 50% | 1d | 59d |  | 0% | 0% |
| 34 | 1.3.1.1 | Casos de Uso | 1d | 2012-10-10 | 2012-10-10 |  |  | 60d | start no earlier than 2012-10-10 | 0% | 100% |
| 35 | 1.3.1.2 | Diagrama de Casos de Uso | 1d | 2012-10-10 | 2012-10-11 |  |  | 60d | finish no earlier than 2012-10-11 | 0% | 100% |
| 36 | 1.3.1.3 | Lista Maestra de Requerimientos Actualizada | 1d | 2012-10-10 A | 2012-10-11 A | 100% |  |  | finish no earlier than 2012-10-11 | 100% | 100% |
| 37 | 1.3.1.4 | Matriz de Trazabilidad Actualizada | 1d | 2012-10-11 A | 2012-10-12 A | 100% |  |  | finish no earlier than 2012-10-12 | 100% | 100% |
| 38 | 1.3.2 | **Análisis de Riesgos** | 3d | 2012-10-15 A | 2012-10-17 A | 100% |  |  |  | 0% | 0% |
| 39 | 1.3.2.1 | Registros de Riesgos | 1d | 2012-10-15 A | 2012-10-16 A | 100% |  |  | finish no earlier than 2012-10-16 | 100% | 100% |
| 40 | 1.3.2.2 | Planes de Prueba | 2d | 2012-10-16 A | 2012-10-17 A | 100% |  |  | finish no earlier than 2012-10-17 | 100% | 100% |
| 41 | 1.3.3 | **Ingeniería** | 16d | 2012-10-18 A | 2012-11-08 A | 100% |  |  |  | 0% | 0% |
| 42 | 1.3.3.1 | Desarrollo de Persistencia | 16d | 2012-10-18 A | 2012-11-08 A | 100% |  |  | finish no earlier than 2012-11-08 | 100% | 100% |
| 43 | 1.3.4 | **Evaluación del Cliente** | 4d | 2012-11-08 A | 2012-11-13 | 75% | 1d | 36d |  | 0% | 0% |
| 44 | 1.3.4.1 | Acta de Aceptacion de Entregables | 1d | 2012-11-08 | 2012-11-09 |  |  | 39d | finish no earlier than 2012-11-09 | 0% | 100% |
| 45 | 1.3.4.2 | Pruebas Funcionales | 3d | 2012-11-09 A | 2012-11-13 A | 100% |  |  | finish no earlier than 2012-11-13 | 50 | 100% |
| 46 | 1.4 | **Iteración 4** | 36d | 2012-11-14 A | 2013-01-02 | 64% | 12.98d | 0d |  | 0% | 0% |
| 47 | 1.4.1 | **Planificación** | 3d | 2012-11-14 A | 2012-11-16 | 75% | 0.75d | 33d |  | 0% | 0% |
| 48 | 1.4.1.1 | Manual de Usuario | 1d | 2012-11-14 | 2012-11-15 |  |  | 35d | finish no earlier than 2012-11-15 | 0% | 100% |
| 49 | 1.4.1.2 | Informe Semanal | 1d | 2012-11-14 A | 2012-11-15 A | 100% |  |  | finish no earlier than 2012-11-15 | 100% | 100% |
| 50 | 1.4.1.3 | Actas de Reuniones | 2d | 2012-11-15 A | 2012-11-16 A | 100% |  |  | finish no earlier than 2012-11-16 | 100% | 100% |

| ID | WBS | Task | Duration | Start | Finish | Complete | Remaining | Total slack | Constraint | Text6 | Text7 |
| --- | --- | --- | --- | --- | --- | --- | --- | --- | --- | --- | --- |
| 51 | 1.4.2 | **Análisis de Riesgos** | 5d | 2012-11-19 A | 2012-11-23 A | 100% |  |  |  | 0% | 0% |
| 52 | 1.4.2.1 | Registro de Riesgos | 1d | 2012-11-19 A | 2012-11-19 A | 100% |  |  | start no earlier than 2012-11-19 | 100% | 100% |
| 53 | 1.4.2.2 | Plan de Capacitación | 5d | 2012-11-19 A | 2012-11-23 A | 100% |  |  | finish no earlier than 2012-11-23 | 100% | 100% |
| 54 | 1.4.3 | **Ingeniería** | 20d | 2012-11-26 A | 2012-12-21 | 81% | 3.89d | 8d |  | 0% | 0% |
| 55 | 1.4.3.1 | Pruebas Unitarias | 4d | 2012-11-26 A | 2012-11-30 A | 100% |  |  | finish no earlier than 2012-11-30 | 0% | 100% |
| 56 | 1.4.3.2 | Pruebas Integrales | 5d | 2012-12-03 A | 2012-12-10 | 50% | 2.5d | 18d | finish no earlier than 2012-12-10 | 0% | 100% |
| 57 | 1.4.3.3 | Pruebas en Producción | 6d | 2012-12-10 A | 2012-12-18 | 80% | 1.2d | 12d | finish no earlier than 2012-12-18 | 0% | 100% |
| 58 | 1.4.3.4 | Implementación | 4d | 2012-12-18 A | 2012-12-21 A | 100% |  |  | finish no earlier than 2012-12-21 | 0% | 100% |
| 59 | 1.4.4 | **Evaluación del Cliente** | 8d | 2012-12-24 | 2013-01-02 |  |  | 0d |  | 0% | 0% |
| 60 | 1.4.4.1 | Acta de Conformidad de Capacitacion | 1d | 2012-12-24 | 2012-12-24 |  |  | 7d | start no earlier than 2012-12-24 | 0% | 100% |
| 61 | 1.4.4.2 | Soporte | 6d | 2012-12-24 | 2013-01-01 |  |  | 2d | finish no earlier than 2013-01-01 | 0% | 100% |
| 62 | 1.4.4.3 | Acta de Finalización del Proyecto | 2d | 2013-01-01 | 2013-01-02 |  |  | 0d | finish no earlier than 2013-01-02 | 0% | 100% |
